# WeKeBA

Schedule from MS Project, 2014-09-01 to 2014-12-23, A marks actual dates.
ZHAW

## Calendars

- Standard: Mon-Tue 08:00-12:00, 13:00-17:00; Wed-Sun off.

## Resources

| Resource |
| --- |
| Tobias Keller |
| Tobias Welti |
| Valentin Schlatter |
| extern |

## Schedule

| ID | WBS | Task | Type | Duration | Start | Finish | Predecessors | Complete | Remaining | Total slack | Free slack | Constraint | Resources | Work | Actual work |
| --- | --- | --- | --- | --- | --- | --- | --- | --- | --- | --- | --- | --- | --- | --- | --- |
| 1 | 1 | **Konzept** |  | 11.75d | 2014-09-01 08:00 A | 2014-10-07 15:00 |  | 22% | 9.14d | 20.25d |  |  |  |  |  |
| 2 | 1.1 | **Software-Konzept** |  | 2.75d | 2014-09-30 08:00 | 2014-10-07 15:00 |  |  |  | 20.25d |  |  |  |  |  |
| 3 | 1.1.1 | Speicherkonzept Datenlogger |  | 6h | 2014-10-07 08:00 | 2014-10-07 15:00 | 18 |  |  | 20.25d | 0d |  |  |  |  |
| 4 | 1.1.2 | Speicherkonzept Sensoreinheit |  | 4h | 2014-10-07 08:00 | 2014-10-07 12:00 | 18 |  |  | 20.5d | 0d |  |  |  |  |
| 5 | 1.1.3 | Timestamp |  | 2h | 2014-09-30 08:00 | 2014-09-30 10:00 |  |  |  | 20.25d | 0d | start no earlier than 2014-09-30 08:00 |  |  |  |
| 6 | 1.1.4 | Busprotokoll |  | 12h | 2014-09-30 10:00 | 2014-10-06 15:00 | 5 |  |  | 20.25d | 0d |  |  |  |  |
| 7 | 1.1.5 | UART-Kommandozeile |  | 4h | 2014-10-06 15:00 | 2014-10-07 10:00 | 6 |  |  | 20.75d | 0d |  |  |  |  |
| 8 | 1.2 | **Hardware-Konzept** |  | 1d | 2014-09-01 08:00 A | 2014-09-01 17:00 A |  | 100% |  |  |  |  |  |  |  |
| 9 | 1.2.1 | Hardware-Konzept |  | 1d | 2014-09-01 08:00 A | 2014-09-01 17:00 A |  | 100% |  |  |  | start no earlier than 2014-09-15 08:00 |  |  |  |
| 11 | 2 | **Software** |  | 13.75d | 2014-09-01 08:00 A | 2014-10-14 15:00 |  | 11% | 12.28d | 20.25d |  |  |  | 32.6h | 8.6h |
| 12 | 2.1 | A/D-Wandlung getaktet |  | 6h | 2014-09-15 08:00 A | 2014-09-15 15:00 A | 24 | 100% |  |  |  | start no earlier than 2014-09-15 08:00 | Tobias Keller | 6h | 6h |
| 13 | 2.2 | CAN-Bus in Betrieb nehmen |  | 5h | 2014-09-01 08:00 A | 2014-09-01 14:00 A |  | 100% |  |  |  |  | Tobias Keller | 2.6h | 2.6h |
| 14 | 2.3 | Ereigniserkennung |  | 8h | 2014-09-15 15:00 | 2014-09-16 15:00 | 12 |  |  | 28.25d |  |  | Tobias Welti | 8h |  |
| 15 | 2.4 | Timestamp |  | 4h | 2014-09-30 10:00 | 2014-09-30 15:00 | 5 |  |  | 24.25d |  | start no earlier than 2014-09-30 08:00 |  |  |  |
| 16 | 2.5 | Busprotokoll |  | 24h | 2014-10-06 15:00 | 2014-10-14 15:00 | 6 |  |  | 20.25d |  |  |  |  |  |
| 17 | 2.6 | UART-Kommandozeile |  | 16h | 2014-10-07 10:00 | 2014-10-14 10:00 | 7 |  |  | 20.75d |  |  |  |  |  |
| 18 | 2.7 | Filesystem |  | 8h | 2014-10-06 08:00 | 2014-10-06 17:00 | 5 |  |  | 20.25d | 0d | start no earlier than 2014-10-06 08:00 | Tobias Keller; Tobias Welti | 16h |  |
| 19 | 2.8 | Speicherung Datenlogger |  | 16h | 2014-10-07 15:00 | 2014-10-14 15:00 | 3 |  |  | 20.25d |  |  |  |  |  |
| 20 | 2.9 | Speicherung Sensoreinheit |  | 16h | 2014-10-07 13:00 | 2014-10-14 12:00 | 4 |  |  | 20.5d |  |  |  |  |  |
| 22 | 3 | **Hardware** |  | 16.25d | 2014-09-01 08:00 A | 2014-10-27 10:00 |  | 54% | 7.5d | 17.75d |  |  |  | 189.8h | 102.05h |
| 23 | 3.1 | Sensor auf Platte montiert | manual | 2h | 2014-09-08 13:00 | 2014-09-08 15:00 | 24 |  |  |  |  |  | Tobias Keller | 2h |  |
| 24 | 3.2 | Sensor anschliessen |  | 4h | 2014-09-08 08:00 A | 2014-09-08 12:00 A |  | 100% |  |  |  |  | Tobias Keller; Tobias Welti | 5h | 5h |
| 25 | 3.3 | CAN-Bus/Transceiver |  | 4h | 2014-09-01 08:00 A | 2014-09-01 12:00 A |  | 100% |  |  |  |  | Tobias Keller | 4h | 4h |
| 26 | 3.4 | SD-Karte anschliessen |  | 1d | 2014-09-02 08:00 A | 2014-09-02 17:00 A |  | 100% |  |  |  |  | Tobias Keller; Tobias Welti | 8h | 8h |
| 27 | 3.5 | MS1: Hardware in Betrieb | milestone, manual | 0d | 2014-09-26 17:00 | 2014-09-26 17:00 |  |  |  |  |  |  |  |  |  |
| 28 | 3.6 | Gehäuse |  | 3h | 2014-09-29 13:00 A | 2014-09-29 16:00 | 32 | 75% | 0.75h | 24.5d | 0d |  | Tobias Welti | 3h | 2.25h |
| 29 | 3.7 | Anschlüsse/Stecker |  | 5h | 2014-09-29 16:00 | 2014-09-30 12:00 | 28 |  |  | 24.5d |  |  | Tobias Welti | 5h |  |
| 30 | 3.8 | PCB Konzept | manual | 2h | 2014-09-21 08:00 A | 2014-09-21 10:00 A |  | 100% |  |  |  |  | Tobias Welti | 2h | 2h |
| 31 | 3.9 | PCB Schaltplan |  | 2h | 2014-09-29 08:00 A | 2014-09-29 10:00 A | 30 | 100% |  |  |  |  | Tobias Welti | 0.8h | 0.8h |
| 32 | 3.10 | PCB Layout |  | 2h | 2014-09-29 10:00 A | 2014-09-29 12:00 A | 31 | 100% |  |  |  |  | Tobias Welti | 2h | 2h |
| 33 | 3.11 | PCB Printen |  | 9.75d | 2014-09-29 13:00 A | 2014-10-13 10:00 A | 32 | 100% |  |  |  |  | extern | 78h | 78h |
| 34 | 3.12 | PCB Löten |  | 10d | 2014-10-13 10:00 | 2014-10-27 10:00 | 33 |  |  | 17.75d |  |  | extern | 80h |  |

| ID | WBS | Task | Type | Duration | Start | Finish | Total slack | Constraint | Resources | Work |
| --- | --- | --- | --- | --- | --- | --- | --- | --- | --- | --- |
| 36 | 4 | **Tester** |  | 0.5d | 2014-09-01 08:00 | 2014-09-01 12:00 | 33.5d |  |  |  |
| 37 | 4.1 | Verifizierung |  | 4h | 2014-09-01 08:00 | 2014-09-01 12:00 | 33.5d |  |  |  |
| 38 | 4.2 | Analog-Generator |  | 4h | 2014-09-01 08:00 | 2014-09-01 12:00 | 33.5d |  |  |  |
| 40 | 5 | Messung Stromverbrauch |  | 1d? | 2014-12-01 08:00 | 2014-12-01 17:00 | 7d | start no earlier than 2014-11-29 08:00 |  |  |
| 43 | 6 | **Dokumentation** |  | 4d | 2014-09-22 08:00 | 2014-09-30 17:00 | 24d |  |  | 16h |
| 44 | 6.1 | Pflichtenheft |  | 8h | 2014-09-22 08:00 | 2014-09-22 17:00 | 27d | finish no earlier than 2014-09-22 17:00 | Tobias Welti | 8h |
| 45 | 6.2 | Konzept-Doku |  | 8h | 2014-09-30 08:00 | 2014-09-30 17:00 | 24d | finish no earlier than 2014-09-30 17:00 | Tobias Welti | 8h |
| 47 | 7 | MS2: Gehäuse/PCB fertig | milestone, manual | 0d | 2014-10-15 17:00 | 2014-10-15 17:00 |  |  |  |  |
| 48 | 8 | MS3: Software fertig | milestone, manual | 0d | 2014-11-25 08:00 | 2014-11-25 08:00 |  |  |  |  |
| 49 | 9 | MS4: Testing done | milestone, manual | 0d | 2014-12-16 08:00 | 2014-12-16 08:00 |  |  |  |  |
| 50 | 10 | MS5: Doku fertig | milestone, manual | 0d | 2014-12-23 17:00 | 2014-12-23 17:00 |  |  |  |  |
| 52 | 11 | Watchdog |  | 1d? | 2014-09-01 08:00 | 2014-09-01 17:00 | 33d |  |  |  |
